| TaskID | TaskName | StartDate | EndDate | Duration | DurationUnit | Progress | resources | info | Predecessor |
| --- | --- | --- | --- | --- | --- | --- | --- | --- | --- |
| 1 | Analysis and documentation | 2026-10-26T07:00:00.000Z | 2026-11-13T16:00:00.000Z | 15 | day | 0 |  |  |  |
| 2 | · Domain, requirements, ADRs | 2026-10-26T07:00:00.000Z | 2026-11-06T16:00:00.000Z | 10 | day | 0 | P1 · AI and data P1 · AI and data 100, P2 · Backend and DB P2 · Backend and DB 100, P3 · Frontend P3 · Frontend 100 | Application domain, scope, architecture ADRs |  |
| 3 | · ProblemSpec v1 and OpenAPI contracts | 2026-11-02T07:00:00.000Z | 2026-11-13T16:00:00.000Z | 10 | day | 0 | P1 · AI and data P1 · AI and data 100, P2 · Backend and DB P2 · Backend and DB 100, P3 · Frontend P3 · Frontend 100 | Common problem schema; public backend API and internal AI service API |  |
| 4 | Data and AI | 2026-11-09T07:00:00.000Z | 2027-01-29T16:00:00.000Z | 48 | day | 0 |  |  |  |
| 5 | · Instance generator and benchmark converters | 2026-11-09T07:00:00.000Z | 2026-11-20T16:00:00.000Z | 10 | day | 0 | P1 · AI and data P1 · AI and data 100 | Factory and public-sector profiles, random weights; Brandimarte, PSPLIB, MSLIB converters |  |
| 6 | · Dispatcher and EDD / ATC baselines | 2026-11-16T07:00:00.000Z | 2026-11-27T16:00:00.000Z | 10 | day | 0 | P1 · AI and data P1 · AI and data 100 |  |  |
| 7 | · CP-SAT teacher and dataset construction | 2026-11-23T07:00:00.000Z | 2026-12-04T16:00:00.000Z | 10 | day | 0 | P1 · AI and data P1 · AI and data 100 | Only OPTIMAL or low-gap labels |  |
| 8 | · Pilot: first model vs ATC | 2026-11-30T07:00:00.000Z | 2026-12-11T16:00:00.000Z | 9 | day | 0 | P1 · AI and data P1 · AI and data 100 | First ranking model; decides go / no-go |  |
| 9 | · M1 context: duration estimation from logs | 2026-12-07T07:00:00.000Z | 2026-12-23T16:00:00.000Z | 12 | day | 0 | P1 · AI and data P1 · AI and data 100 | BPIC 2015 / Road Traffic Fines logs |  |
| 10 | · FastAPI AI service (API, fallback, KPIs) – part 1 | 2026-12-14T07:00:00.000Z | 2026-12-23T16:00:00.000Z | 8 | day | 0 | P1 · AI and data P1 · AI and data 100 |  |  |
| 11 | · FastAPI AI service (API, fallback, KPIs) – part 2 | 2027-01-08T07:00:00.000Z | 2027-01-15T16:00:00.000Z | 6 | day | 0 | P1 · AI and data P1 · AI and data 100 |  | 10FS |
| 12 | · Generalization experiments | 2027-01-08T07:00:00.000Z | 2027-01-29T16:00:00.000Z | 16 | day | 0 | P1 · AI and data P1 · AI and data 100 | Larger instances, unseen profile, different weights | 9FS |
| 13 | Backend and DB | 2026-11-09T07:00:00.000Z | 2027-01-29T16:00:00.000Z | 48 | day | 0 |  |  |  |
| 14 | · MySQL schema, entities, Flyway | 2026-11-09T07:00:00.000Z | 2026-11-20T16:00:00.000Z | 10 | day | 0 | P2 · Backend and DB P2 · Backend and DB 100 |  |  |
| 15 | · Security and CRUD for configuration / orders | 2026-11-16T07:00:00.000Z | 2026-12-04T16:00:00.000Z | 15 | day | 0 | P2 · Backend and DB P2 · Backend and DB 100 | Spring Security, JWT |  |
| 16 | · Scheduling and AI client (mock first) | 2026-11-30T07:00:00.000Z | 2026-12-23T16:00:00.000Z | 17 | day | 0 | P2 · Backend and DB P2 · Backend and DB 100 | Resilience4j: timeout, retry, circuit breaker |  |
| 17 | · Decisions, execution, KPIs, audit | 2027-01-08T07:00:00.000Z | 2027-01-22T16:00:00.000Z | 11 | day | 0 | P2 · Backend and DB P2 · Backend and DB 100 |  | 16FS |
| 18 | · Public API and CloudEvents events | 2027-01-18T07:00:00.000Z | 2027-01-29T16:00:00.000Z | 10 | day | 0 | P2 · Backend and DB P2 · Backend and DB 100 | Contracts with P02/P03, P19, P20, P21 |  |
| 19 | Frontend | 2026-11-09T07:00:00.000Z | 2027-02-03T16:00:00.000Z | 51 | day | 0 |  |  |  |
| 20 | · Mockups and user flows | 2026-11-09T07:00:00.000Z | 2026-11-20T16:00:00.000Z | 10 | day | 0 | P3 · Frontend P3 · Frontend 100 |  |  |
| 21 | · Angular setup, auth, configuration | 2026-11-16T07:00:00.000Z | 2026-12-04T16:00:00.000Z | 15 | day | 0 | P3 · Frontend P3 · Frontend 100 |  |  |
| 22 | · Orders and graph editor | 2026-11-30T07:00:00.000Z | 2026-12-23T16:00:00.000Z | 17 | day | 0 | P3 · Frontend P3 · Frontend 100 |  |  |
| 23 | · Scheduling: Gantt view and review | 2027-01-08T07:00:00.000Z | 2027-01-29T16:00:00.000Z | 16 | day | 0 | P3 · Frontend P3 · Frontend 100 |  | 22FS |
| 24 | · KPI dashboard | 2027-01-25T07:00:00.000Z | 2027-02-03T16:00:00.000Z | 8 | day | 0 | P3 · Frontend P3 · Frontend 100 |  |  |
| 25 | Integration, evaluation, delivery | 2027-01-18T07:00:00.000Z | 2027-02-09T16:00:00.000Z | 17 | day | 0 |  |  |  |
| 26 | · Docker Compose and end-to-end integration | 2027-01-18T07:00:00.000Z | 2027-01-29T16:00:00.000Z | 10 | day | 0 | P1 · AI and data P1 · AI and data 100, P2 · Backend and DB P2 · Backend and DB 100, P3 · Frontend P3 · Frontend 100 |  |  |
| 27 | · Experimental evaluation and shadow mode | 2027-01-18T07:00:00.000Z | 2027-02-03T16:00:00.000Z | 13 | day | 0 | P1 · AI and data P1 · AI and data 100 | Comparison with EDD, ATC and CP-SAT |  |
| 28 | · Testing and fixes | 2027-01-25T07:00:00.000Z | 2027-02-05T16:00:00.000Z | 10 | day | 0 | P1 · AI and data P1 · AI and data 100, P2 · Backend and DB P2 · Backend and DB 100, P3 · Frontend P3 · Frontend 100 |  |  |
| 29 | · Final documentation (8 deliverables) | 2027-01-25T07:00:00.000Z | 2027-02-08T16:00:00.000Z | 11 | day | 0 | P1 · AI and data P1 · AI and data 100, P2 · Backend and DB P2 · Backend and DB 100, P3 · Frontend P3 · Frontend 100 |  |  |
| 30 | · Presentation and buffer | 2027-02-03T07:00:00.000Z | 2027-02-09T16:00:00.000Z | 5 | day | 0 | P1 · AI and data P1 · AI and data 100, P2 · Backend and DB P2 · Backend and DB 100, P3 · Frontend P3 · Frontend 100 |  |  |
| 31 | Milestones | 2026-11-06T07:00:00.000Z | 2027-02-10T16:00:00.000Z | 57 | day | 0 |  |  |  |
| 32 | · TODAY · 6 Nov | 2026-11-06T07:00:00.000Z | 2026-11-06T07:00:00.000Z | 0 | day | 0 |  |  |  |
| 33 | · M0 Validation with the professor | 2026-11-06T16:00:00.000Z | 2026-11-06T16:00:00.000Z | 0 | day | 0 |  |  | 2FS |
| 34 | · M1 Pilot outcome (go / no-go) | 2026-12-11T16:00:00.000Z | 2026-12-11T16:00:00.000Z | 0 | day | 0 |  |  | 8FS |
| 35 | · M2 Minimal end-to-end system | 2026-12-23T16:00:00.000Z | 2026-12-23T16:00:00.000Z | 0 | day | 0 |  |  | 16FS,22FS,10FS |
| 36 | · M3 Feature freeze | 2027-01-29T16:00:00.000Z | 2027-01-29T16:00:00.000Z | 0 | day | 0 |  |  | 18FS,23FS,26FS |
| 37 | · M4 Delivery | 2027-02-10T16:00:00.000Z | 2027-02-10T16:00:00.000Z | 0 | day | 0 |  |  |  |

Links (from, to):
- 8 12
- 13 17
