| TaskID | TaskName | StartDate | EndDate | Duration | DurationUnit | Progress | resources | info | Predecessor |
| --- | --- | --- | --- | --- | --- | --- | --- | --- | --- |
| 1 | Analysis and documentation | 2026-10-26T07:00:00.000Z | 2027-02-10T16:00:00.000Z | 66 | day | 0 |  |  |  |
| 2 | · Domain, requirements, ADRs | 2026-10-26T07:00:00.000Z | 2026-11-06T16:00:00.000Z | 10 | day | 0 | P1 · AI and data P1 · AI and data 100, P2 · Backend and DB P2 · Backend and DB 100, P3 · Frontend P3 · Frontend 100 | Application domain, scope, architecture ADRs |  |
| 3 | · ProblemSpec v1 and OpenAPI contracts | 2026-11-02T07:00:00.000Z | 2026-11-13T16:00:00.000Z | 10 | day | 0 | P1 · AI and data P1 · AI and data 100, P2 · Backend and DB P2 · Backend and DB 100, P3 · Frontend P3 · Frontend 100 | Common problem schema; public backend API and internal AI service API |  |
| 4 | · Ongoing documentation (ADRs, specs, logs) – part 1 | 2026-10-26T07:00:00.000Z | 2026-12-23T16:00:00.000Z | 42 | day | 0 | P1 · AI and data P1 · AI and data 100, P2 · Backend and DB P2 · Backend and DB 100, P3 · Frontend P3 · Frontend 100 | Kept up to date during development: ADRs, versioned ProblemSpec / OpenAPI, dataset catalogue with licences, experiment log, README and Docker instructions |  |
| 5 | · Ongoing documentation (ADRs, specs, logs) – part 2 | 2027-01-08T07:00:00.000Z | 2027-02-10T16:00:00.000Z | 24 | day | 0 | P1 · AI and data P1 · AI and data 100, P2 · Backend and DB P2 · Backend and DB 100, P3 · Frontend P3 · Frontend 100 | Continues until delivery (10 Feb) | 4FS |
| 6 | Data and AI | 2026-11-09T07:00:00.000Z | 2027-01-29T16:00:00.000Z | 48 | day | 0 |  |  |  |
| 7 | · Instance generator and benchmark converters | 2026-11-09T07:00:00.000Z | 2026-11-20T16:00:00.000Z | 10 | day | 0 | P1 · AI and data P1 · AI and data 100 | Factory and public-sector profiles, random weights; Brandimarte, PSPLIB, MSLIB converters |  |
| 8 | · Dispatcher and EDD / ATC baselines | 2026-11-16T07:00:00.000Z | 2026-11-27T16:00:00.000Z | 10 | day | 0 | P1 · AI and data P1 · AI and data 100 |  |  |
| 9 | · CP-SAT teacher and dataset construction | 2026-11-23T07:00:00.000Z | 2026-12-04T16:00:00.000Z | 10 | day | 0 | P1 · AI and data P1 · AI and data 100 | Only OPTIMAL or low-gap labels |  |
| 10 | · Pilot: first model vs ATC | 2026-11-30T07:00:00.000Z | 2026-12-11T16:00:00.000Z | 9 | day | 0 | P1 · AI and data P1 · AI and data 100 | First ranking model; decides go / no-go |  |
| 11 | · M1 context: duration estimation from logs | 2026-12-07T07:00:00.000Z | 2026-12-23T16:00:00.000Z | 12 | day | 0 | P1 · AI and data P1 · AI and data 100 | BPIC 2015 / Road Traffic Fines logs |  |
| 12 | · FastAPI AI service (API, fallback, KPIs) – part 1 | 2026-12-14T07:00:00.000Z | 2026-12-23T16:00:00.000Z | 8 | day | 0 | P1 · AI and data P1 · AI and data 100 |  |  |
| 13 | · FastAPI AI service (API, fallback, KPIs) – part 2 | 2027-01-08T07:00:00.000Z | 2027-01-15T16:00:00.000Z | 6 | day | 0 | P1 · AI and data P1 · AI and data 100 |  | 12FS |
| 14 | · Generalization experiments | 2027-01-08T07:00:00.000Z | 2027-01-29T16:00:00.000Z | 16 | day | 0 | P1 · AI and data P1 · AI and data 100 | Larger instances, unseen profile, different weights | 11FS |
| 15 | Backend and DB | 2026-11-09T07:00:00.000Z | 2027-01-29T16:00:00.000Z | 48 | day | 0 |  |  |  |
| 16 | · MySQL schema, entities, Flyway | 2026-11-09T07:00:00.000Z | 2026-11-20T16:00:00.000Z | 10 | day | 0 | P2 · Backend and DB P2 · Backend and DB 100 |  |  |
| 17 | · Security and CRUD for configuration / orders | 2026-11-16T07:00:00.000Z | 2026-12-04T16:00:00.000Z | 15 | day | 0 | P2 · Backend and DB P2 · Backend and DB 100 | Spring Security, JWT |  |
| 18 | · Scheduling and AI client (mock first) | 2026-11-30T07:00:00.000Z | 2026-12-23T16:00:00.000Z | 17 | day | 0 | P2 · Backend and DB P2 · Backend and DB 100 | Resilience4j: timeout, retry, circuit breaker |  |
| 19 | · Decisions, execution, KPIs, audit | 2027-01-08T07:00:00.000Z | 2027-01-22T16:00:00.000Z | 11 | day | 0 | P2 · Backend and DB P2 · Backend and DB 100 |  | 18FS |
| 20 | · Public API and CloudEvents events | 2027-01-18T07:00:00.000Z | 2027-01-29T16:00:00.000Z | 10 | day | 0 | P2 · Backend and DB P2 · Backend and DB 100 | Contracts with P02/P03, P19, P20, P21 |  |
| 21 | Frontend | 2026-11-09T07:00:00.000Z | 2027-02-03T16:00:00.000Z | 51 | day | 0 |  |  |  |
| 22 | · Mockups and user flows | 2026-11-09T07:00:00.000Z | 2026-11-20T16:00:00.000Z | 10 | day | 0 | P3 · Frontend P3 · Frontend 100 |  |  |
| 23 | · React setup, auth, configuration | 2026-11-16T07:00:00.000Z | 2026-12-04T16:00:00.000Z | 15 | day | 0 | P3 · Frontend P3 · Frontend 100 |  |  |
| 24 | · Orders and graph editor | 2026-11-30T07:00:00.000Z | 2026-12-23T16:00:00.000Z | 17 | day | 0 | P3 · Frontend P3 · Frontend 100 |  |  |
| 25 | · Scheduling: Gantt view and review | 2027-01-08T07:00:00.000Z | 2027-01-29T16:00:00.000Z | 16 | day | 0 | P3 · Frontend P3 · Frontend 100 |  | 24FS |
| 26 | · KPI dashboard | 2027-01-25T07:00:00.000Z | 2027-02-03T16:00:00.000Z | 8 | day | 0 | P3 · Frontend P3 · Frontend 100 |  |  |
| 27 | Integration, evaluation, delivery | 2027-01-18T07:00:00.000Z | 2027-02-09T16:00:00.000Z | 17 | day | 0 |  |  |  |
| 28 | · Docker Compose and end-to-end integration | 2027-01-18T07:00:00.000Z | 2027-01-29T16:00:00.000Z | 10 | day | 0 | P1 · AI and data P1 · AI and data 100, P2 · Backend and DB P2 · Backend and DB 100, P3 · Frontend P3 · Frontend 100 |  |  |
| 29 | · Experimental evaluation and shadow mode | 2027-01-18T07:00:00.000Z | 2027-02-03T16:00:00.000Z | 13 | day | 0 | P1 · AI and data P1 · AI and data 100 | Comparison with EDD, ATC and CP-SAT |  |
| 30 | · Testing and fixes | 2027-01-25T07:00:00.000Z | 2027-02-05T16:00:00.000Z | 10 | day | 0 | P1 · AI and data P1 · AI and data 100, P2 · Backend and DB P2 · Backend and DB 100, P3 · Frontend P3 · Frontend 100 |  |  |
| 31 | · Final documentation review (8 deliverables) | 2027-01-25T07:00:00.000Z | 2027-02-08T16:00:00.000Z | 11 | day | 0 | P1 · AI and data P1 · AI and data 100, P2 · Backend and DB P2 · Backend and DB 100, P3 · Frontend P3 · Frontend 100 |  |  |
| 32 | · Presentation and buffer | 2027-02-03T07:00:00.000Z | 2027-02-09T16:00:00.000Z | 5 | day | 0 | P1 · AI and data P1 · AI and data 100, P2 · Backend and DB P2 · Backend and DB 100, P3 · Frontend P3 · Frontend 100 |  |  |
| 33 | Milestones | 2026-11-06T07:00:00.000Z | 2027-02-10T16:00:00.000Z | 57 | day | 0 |  |  |  |
| 34 | · TODAY · 6 Nov | 2026-11-06T07:00:00.000Z | 2026-11-06T07:00:00.000Z | 0 | day | 0 |  |  |  |
| 35 | · M0 Validation with the professor | 2026-11-06T16:00:00.000Z | 2026-11-06T16:00:00.000Z | 0 | day | 0 |  |  | 2FS |
| 36 | · M1 Pilot outcome (go / no-go) | 2026-12-11T16:00:00.000Z | 2026-12-11T16:00:00.000Z | 0 | day | 0 |  |  | 10FS |
| 37 | · M2 Minimal end-to-end system | 2026-12-23T16:00:00.000Z | 2026-12-23T16:00:00.000Z | 0 | day | 0 |  |  | 18FS,24FS,12FS |
| 38 | · M3 Feature freeze | 2027-01-29T16:00:00.000Z | 2027-01-29T16:00:00.000Z | 0 | day | 0 |  |  | 20FS,25FS,28FS |
| 39 | · M4 Delivery | 2027-02-10T16:00:00.000Z | 2027-02-10T16:00:00.000Z | 0 | day | 0 |  |  | 5FS |

Links (from, to):
- 8 12
- 13 17
