| TaskID | TaskName | StartDate | EndDate | Duration | DurationUnit | Progress | resources | info | Predecessor |
| --- | --- | --- | --- | --- | --- | --- | --- | --- | --- |
| 1 | Phase 1: Analysis and documentation | 2026-10-26T07:00:00.000Z | 2026-11-06T16:00:00.000Z | 10 | day | 0 |  |  |  |
| 2 | · Requirements, domain and architecture | 2026-10-26T07:00:00.000Z | 2026-10-30T16:00:00.000Z | 5 | day | 0 | P1 · AI and data P1 · AI and data 100, P2 · Backend and DB P2 · Backend and DB 100, P3 · Frontend P3 · Frontend 100 | Component architecture (P06 Architecture in the VPP), domain profiles, datasets |  |
| 3 | · Data model and API contracts | 2026-11-02T07:00:00.000Z | 2026-11-06T16:00:00.000Z | 5 | day | 0 | P1 · AI and data P1 · AI and data 100, P2 · Backend and DB P2 · Backend and DB 100, P3 · Frontend P3 · Frontend 100 | MySQL data areas, ProblemSpec JSON, internal /optimize contract, public REST API | 2FS |
| 4 | · M0 Validation with the professor | 2026-11-06T16:00:00.000Z | 2026-11-06T16:00:00.000Z | 0 | day | 0 |  | Includes the open decision: CP-SAT as fallback or only as teacher | 3FS |
| 5 | Phase 2: Work structure planning | 2026-11-09T07:00:00.000Z | 2026-11-13T16:00:00.000Z | 5 | day | 0 |  |  |  |
| 6 | · Backlog, sprint planning and project setup | 2026-11-09T07:00:00.000Z | 2026-11-13T16:00:00.000Z | 5 | day | 0 | P1 · AI and data P1 · AI and data 100, P2 · Backend and DB P2 · Backend and DB 100, P3 · Frontend P3 · Frontend 100 | Repository, Docker Compose (Angular, Spring Boot, MySQL, FastAPI), task list for each sprint | 4FS |
| 7 | Phase 3 · Sprint 1: Foundations | 2026-11-16T07:00:00.000Z | 2026-11-27T16:00:00.000Z | 10 | day | 0 |  |  |  |
| 8 | · Log and benchmark converters | 2026-11-16T07:00:00.000Z | 2026-11-20T16:00:00.000Z | 5 | day | 0 | P1 · AI and data P1 · AI and data 100 | Brandimarte, PSPLIB, MSLIB, BPIC logs to the common schema | 6FS |
| 9 | · Instance generator | 2026-11-23T07:00:00.000Z | 2026-11-27T16:00:00.000Z | 5 | day | 0 | P1 · AI and data P1 · AI and data 100 | Domain profiles, random objective weights, calibration on logs and benchmarks | 8FS |
| 10 | · MySQL schema, JPA entities and Flyway migrations | 2026-11-16T07:00:00.000Z | 2026-11-20T16:00:00.000Z | 5 | day | 0 | P2 · Backend and DB P2 · Backend and DB 100 | Configuration, orders and processes, plans, decisions and executions, model metadata, audit log | 6FS |
| 11 | · Security: Spring Security, JWT and roles | 2026-11-23T07:00:00.000Z | 2026-11-27T16:00:00.000Z | 5 | day | 0 | P2 · Backend and DB P2 · Backend and DB 100 | Planner / operator / administrator roles | 10FS |
| 12 | · Mockups and Angular setup | 2026-11-16T07:00:00.000Z | 2026-11-20T16:00:00.000Z | 5 | day | 0 | P3 · Frontend P3 · Frontend 100 |  | 6FS |
| 13 | · Auth & Roles: login page | 2026-11-23T07:00:00.000Z | 2026-11-27T16:00:00.000Z | 5 | day | 0 | P3 · Frontend P3 · Frontend 100 | Uses the JWT issued by Security | 12FS |
| 14 | Phase 3 · Sprint 2: Problem model and core features | 2026-11-30T07:00:00.000Z | 2026-12-11T16:00:00.000Z | 9 | day | 0 |  |  |  |
| 15 | · Disjunctive graph, dispatcher and ATC / EDD rules | 2026-11-30T07:00:00.000Z | 2026-12-03T16:00:00.000Z | 4 | day | 0 | P1 · AI and data P1 · AI and data 100 | Feasible plan by construction; ATC / EDD also used as fallback and as baseline | 9FS |
| 16 | · CP-SAT teacher | 2026-12-04T07:00:00.000Z | 2026-12-11T16:00:00.000Z | 5 | day | 0 | P1 · AI and data P1 · AI and data 100 | Labels the generated instances (OR-Tools); training only. Labelling can keep running during the holidays | 15FS |
| 17 | · Configuration and Orders & Priority (CRUD) | 2026-11-30T07:00:00.000Z | 2026-12-04T16:00:00.000Z | 5 | day | 0 | P2 · Backend and DB P2 · Backend and DB 100 | Resources, calendars, skills, domain profiles; orders, activities, process graph | 11FS |
| 18 | · Planning: ProblemSpec builder and public REST API | 2026-12-07T07:00:00.000Z | 2026-12-11T16:00:00.000Z | 4 | day | 0 | P2 · Backend and DB P2 · Backend and DB 100 |  | 17FS |
| 19 | · Configuration and Orders & Process Graph pages | 2026-11-30T07:00:00.000Z | 2026-12-11T16:00:00.000Z | 9 | day | 0 | P3 · Frontend P3 · Frontend 100 | Includes the process graph editor | 13FS |
| 20 | Phase 3 · Sprint 3: Minimal end-to-end system | 2026-12-14T07:00:00.000Z | 2026-12-18T16:00:00.000Z | 5 | day | 0 |  |  |  |
| 21 | · Inference service (FastAPI): API & Validation and fallback | 2026-12-14T07:00:00.000Z | 2026-12-18T16:00:00.000Z | 5 | day | 0 | P1 · AI and data P1 · AI and data 100 | optimize endpoint, Pydantic schema, consistency checks; returns the ATC / EDD plan until the trained model exists | 16FS |
| 22 | · AI Client (Resilience4j) and plan storage | 2026-12-14T07:00:00.000Z | 2026-12-18T16:00:00.000Z | 5 | day | 0 | P2 · Backend and DB P2 · Backend and DB 100 | Timeout, retry, circuit breaker; Plans & Assignments as JSON | 18FS |
| 23 | · Planning & Gantt view | 2026-12-14T07:00:00.000Z | 2026-12-18T16:00:00.000Z | 5 | day | 0 | P3 · Frontend P3 · Frontend 100 | Plan generation, Gantt view | 19FS |
| 24 | · M1 Minimal end-to-end system | 2026-12-18T16:00:00.000Z | 2026-12-18T16:00:00.000Z | 0 | day | 0 |  | Order in, feasible fallback plan out through /optimize, shown as Gantt | 21FS,22FS,23FS |
| 25 | Phase 3 · Sprint 4: AI models and human in the loop | 2027-01-11T07:00:00.000Z | 2027-01-22T16:00:00.000Z | 10 | day | 0 |  |  |  |
| 26 | · Dataset builder and M2 policy training | 2027-01-11T07:00:00.000Z | 2027-01-15T16:00:00.000Z | 5 | day | 0 | P1 · AI and data P1 · AI and data 100 | States, candidates, labels, versioned splits; ranking model for M2 | 24FS |
| 27 | · M1 context estimator training, model loader and confidence | 2027-01-18T07:00:00.000Z | 2027-01-22T16:00:00.000Z | 5 | day | 0 | P1 · AI and data P1 · AI and data 100 | Duration and setup models; active version loading; low confidence triggers the fallback | 26FS |
| 28 | · Decisions, Execution & KPIs (shadow mode) and Audit | 2027-01-11T07:00:00.000Z | 2027-01-15T16:00:00.000Z | 5 | day | 0 | P2 · Backend and DB P2 · Backend and DB 100 | Approve / modify / reject; actual execution; input, model version, output and decision traced | 24FS |
| 29 | · Model publisher and model metadata | 2027-01-18T07:00:00.000Z | 2027-01-22T16:00:00.000Z | 5 | day | 0 | P2 · Backend and DB P2 · Backend and DB 100 | Publishes approved versions to Model Artifacts and registers them in Model Metadata | 28FS |
| 30 | · Plan Review and Execution pages | 2027-01-11T07:00:00.000Z | 2027-01-15T16:00:00.000Z | 5 | day | 0 | P3 · Frontend P3 · Frontend 100 | Approve, modify or reject a plan; actual execution recording | 24FS |
| 31 | · KPI Dashboard, Model Info and plan comparison | 2027-01-18T07:00:00.000Z | 2027-01-22T16:00:00.000Z | 5 | day | 0 | P3 · Frontend P3 · Frontend 100 | Indicators over time; active model version and metrics (read-only); comparison with reference plan | 30FS |
| 32 | · M2 Feature freeze | 2027-01-22T16:00:00.000Z | 2027-01-22T16:00:00.000Z | 0 | day | 0 |  | No new features from here, only tests and fixes | 27FS,29FS,31FS |
| 33 | Phase 4: Evaluation and delivery | 2027-01-25T07:00:00.000Z | 2027-02-10T16:00:00.000Z | 13 | day | 0 |  |  |  |
| 34 | · Experimental evaluation and model publishing | 2027-01-25T07:00:00.000Z | 2027-01-29T16:00:00.000Z | 5 | day | 0 | P1 · AI and data P1 · AI and data 100 | M2 policy vs EDD, ATC and CP-SAT on benchmarks and synthetic instances; publish the approved version | 32FS |
| 35 | · Integration testing, shadow mode run and fixes | 2027-01-25T07:00:00.000Z | 2027-01-29T16:00:00.000Z | 5 | day | 0 | P2 · Backend and DB P2 · Backend and DB 100, P3 · Frontend P3 · Frontend 100 | Fallback and circuit breaker tests, replay of process logs in shadow mode | 32FS |
| 36 | · Final documentation | 2027-02-01T07:00:00.000Z | 2027-02-05T16:00:00.000Z | 5 | day | 0 | P1 · AI and data P1 · AI and data 100, P2 · Backend and DB P2 · Backend and DB 100, P3 · Frontend P3 · Frontend 100 |  | 34FS,35FS |
| 37 | · Final presentation preparation | 2027-02-08T07:00:00.000Z | 2027-02-09T16:00:00.000Z | 2 | day | 0 | P1 · AI and data P1 · AI and data 100, P2 · Backend and DB P2 · Backend and DB 100, P3 · Frontend P3 · Frontend 100 |  | 36FS |
| 38 | · M3 Delivery | 2027-02-10T16:00:00.000Z | 2027-02-10T16:00:00.000Z | 0 | day | 0 |  |  | 37FS |

Links (from, to):
- 8 12
- 13 17
